# FF

Schedule from MS Project, 2020-12-15 to 2021-03-18.

## Calendars

- Standard: Mon-Fri 08:00-12:00, 13:00-17:00; Sat 08:00-17:00; Sun 08:00-09:00.

## Resources

| Resource |
| --- |
| Mixture Machine |
| Excavator |

## Schedule

| ID | WBS | Task | Duration | Start | Finish | Predecessors | Total slack | Resources | Work |
| --- | --- | --- | --- | --- | --- | --- | --- | --- | --- |
| 1 | 1 | **TYPE_A 724 to 935 total 211 meter** | 84d | 2020-12-15 | 2021-03-18 |  | 0d |  | 604h |
| 2 | 1.1 | Mobilization and Site Preparation | 7d | 2020-12-15 | 2020-12-22 |  | 0d |  |  |
| 3 | 1.2 | **Manufacturing CC Block** | 17d | 2020-12-22 | 2021-01-10 |  | 15d |  | 264h |
| 4 | 1.2.1 | CC Block Manufacture(40X40X40)-5012 Nos | 17d | 2020-12-22 | 2021-01-10 | 2 | 15d | Mixture Machine | 136h |
| 5 | 1.2.2 | CC Block Manufacture(40X40X20)-33338 Nos | 16d | 2020-12-22 | 2021-01-09 | 2 | 16d | Mixture Machine | 128h |
| 6 | 1.3 | Embankment Construction-6974 cum | 30d | 2020-12-22 | 2021-01-25 | 2 | 0d | Excavator [75%] | 180h |
| 7 | 1.4 | Placing Sand Filter-560 cum | 10d | 2021-01-25 | 2021-02-05 | 6 | 0d | Excavator | 80h |
| 8 | 1.5 | Placing Geotextile Filter-6098 sqm | 10d | 2021-02-05 | 2021-02-16 | 7 | 0d | Excavator | 80h |
| 9 | 1.6 | Placing Pea Gravel Filter-560 cum | 10d | 2021-02-16 | 2021-02-27 | 8 | 0d |  |  |
| 10 | 1.7 | Placing CC Block-1388 cum/38350 Nos | 10d | 2021-02-27 | 2021-03-10 | 9, 4FS+28d, 5FS+28d | 0d |  |  |
| 11 | 1.8 | Ancilary Work for Site Completion-1 LS | 7d | 2021-03-11 | 2021-03-18 | 10 | 0d |  |  |
